# 东科 Vth -1V

Schedule from a web Gantt chart, 2025-09-29 to 2026-12-20.
Every day is a working day

## Schedule

| ID | WBS | Task | Duration | Start | Finish | Predecessors | Complete | Status | inPeople |
| --- | --- | --- | --- | --- | --- | --- | --- | --- | --- |
| 2 | 1 | kick-off | 1d | 2025-09-29 | 2025-09-29 |  | 100% |  |  |
| 3 | 2 | **1st Learning Cycle** | 107d | 2025-10-15 | 2026-01-29 |  |  |  |  |
| 4 | 2.1 | 项目立项会议 | 107d | 2025-10-15 | 2026-01-29 |  |  |  |  |
| 5 | 2.2 | W/S | 30d | 2025-10-15 | 2025-11-13 |  |  |  |  |
| 6 | 2.3 | F/O | 2d | 2025-11-14 | 2025-11-15 | 5 |  | waiting |  |
| 7 | 2.4 | Samples | 35d | 2025-11-16 | 2025-12-20 | 6 |  | waiting | 张明东/谢书生 |
| 8 | 2.5 | RE 1000H | 40d | 2025-12-21 | 2026-01-29 | 7 |  | waiting | 刘子良/邓超凡 |
| 9 | 3 | **2nd Learning Cycle** | 120d | 2026-01-30 | 2026-05-29 |  |  |  |  |
| 10 | 3.1 | Wafer & Assembly | 80d | 2026-01-30 | 2026-04-19 |  |  |  |  |
| 11 | 3.2 | RE 1000H | 40d | 2026-04-20 | 2026-05-29 | 10 |  | waiting | 刘子良/邓超凡 |
| 12 | 4 | **3rd Learning Cycl** | 93d | 2026-05-31 | 2026-08-31 |  |  |  |  |
| 13 | 4.1 | RE 1000H | 93d | 2026-05-31 | 2026-08-31 |  |  |  | 刘子良/邓超凡 |
| 14 | 5 | **Formal Qual.** | 111d | 2026-09-01 | 2026-12-20 |  |  |  |  |
| 15 | 5.1 | SPW W/S | 41d | 2026-09-01 | 2026-10-11 |  |  |  |  |
| 16 | 5.2 | F/O & Assemby out | 30d | 2026-10-12 | 2026-11-10 | 15 |  | waiting |  |
| 17 | 5.3 | RE 168H | 15d | 2026-11-11 | 2026-11-25 | 16 |  | waiting | 刘子良/邓超凡 |
| 18 | 5.4 | RE 1000H | 40d | 2026-11-11 | 2026-12-20 | 16 |  | waiting | 刘子良/邓超凡 |
